# Gros oeuvre

Schedule from MS Project, 2024-06-03 to 2024-08-20, 7 hours a day, costs in €.

## Calendars

- 2024 avec congés et heures: Mon-Fri 08:00-12:00, 13:00-16:30; Sat-Sun off. Exceptions (off unless hours are given): 2024-07-14 (fete nationale), 2024-07-20 to 2024-08-04 (Congés), 2024-08-15 (assomption).

## Resources

| Resource | Rate |
| --- | --- |
| Chef d'équipe verticaux | 28.6 |
| Chef d'équipe horizontale | 28.6 |
| Maçons | 22.5 |
| Ouvrier d'éxecution | 22.1 |
| Ouvrier profesionnel | 24.3 |

## Schedule

| ID | WBS | Task | Duration | Start | Finish | Predecessors | Total slack | Free slack | Resources | Work | Cost |
| --- | --- | --- | --- | --- | --- | --- | --- | --- | --- | --- | --- |
| 1 | 1 | **Sous-sol** | 19d | 2024-06-03 | 2024-06-26 |  | 0d |  |  | 294h | 7,195.3 |
| 2 | 1.1 | Coulage des fondations | 1d | 2024-06-03 | 2024-06-04 |  | 0d |  | Chef d'équipe horizontale; Maçons; Ouvrier d'éxecution; Ouvrier profesionnel | 28h | 682.5 |
| 3 | 1.2 | Coffrage des murs | 4d | 2024-06-05 | 2024-06-10 | 2FS+1d | 0d |  | Chef d'équipe verticaux; Maçons; Ouvrier d'éxecution; Ouvrier profesionnel | 112h | 2,730 |
| 4 | 1.3 | Feirallage | 1d | 2024-06-05 | 2024-06-05 | 3SS | 3d |  | Chef d'équipe verticaux; Maçons; Ouvrier d'éxecution; Ouvrier profesionnel | 28h | 682.5 |
| 5 | 1.4 | Coulage du béton des murs | 1d | 2024-06-10 | 2024-06-11 | 4, 3 | 0d |  | Chef d'équipe verticaux; Maçons; Ouvrier d'éxecution; Ouvrier profesionnel | 28h | 682.5 |
| 6 | 1.5 | Décoffrage | 1d | 2024-06-12 | 2024-06-13 | 5FS+1d | 0d |  | Chef d'équipe verticaux; Maçons; Ouvrier d'éxecution; Ouvrier profesionnel | 28h | 682.5 |
| 7 | 1.6 | Ferirallage de la dalle du sous-sol | 1d | 2024-06-13 | 2024-06-14 | 6 | 11d | 0d | Chef d'équipe horizontale; Maçons; Ouvrier d'éxecution; Ouvrier profesionnel | 28h | 682.5 |
| 8 | 1.7 | Coullage de la dalle du sous-sol | 1d | 2024-06-14 | 2024-06-17 | 7 | 11d | 7d | Chef d'équipe horizontale; Maçons; Ouvrier d'éxecution; Ouvrier profesionnel | 28h | 682.5 |
| 9 | 1.8 | Pose de l'escalier | 1d | 2024-06-25 | 2024-06-26 | 15, 8 | 4d |  | Chef d'équipe horizontale; Ouvrier profesionnel | 14h | 370.3 |
| 10 | 2 | **Niveau RdC** | 24d | 2024-06-13 | 2024-07-15 |  | 0d |  |  | 350h | 8,560.3 |
| 11 | 2.1 | Coffrage de la dalle | 3d | 2024-06-13 | 2024-06-18 | 6 | 0d |  | Chef d'équipe horizontale; Maçons; Ouvrier d'éxecution; Ouvrier profesionnel | 84h | 2,047.5 |
| 12 | 2.2 | Mise en place des poutrelles hourdis | 2d | 2024-06-18 | 2024-06-20 | 11 | 0d |  | Chef d'équipe horizontale; Maçons; Ouvrier d'éxecution; Ouvrier profesionnel | 56h | 1,365 |
| 13 | 2.3 | Feirallage | 1d | 2024-06-20 | 2024-06-21 | 12 | 0d |  | Chef d'équipe horizontale; Maçons; Ouvrier d'éxecution; Ouvrier profesionnel | 28h | 682.5 |
| 14 | 2.4 | Coulage du béton de la dalle | 1d | 2024-06-21 | 2024-06-24 | 13 | 0d |  | Chef d'équipe horizontale; Maçons; Ouvrier d'éxecution; Ouvrier profesionnel | 28h | 682.5 |
| 15 | 2.5 | Décoffrage | 1d | 2024-06-25 | 2024-06-25 | 14FS+1d | 0d |  | Chef d'équipe horizontale; Maçons; Ouvrier d'éxecution; Ouvrier profesionnel | 28h | 682.5 |
| 16 | 2.6 | Maçonnerie des murs | 4d | 2024-06-25 | 2024-07-01 | 15 | 0d |  | Chef d'équipe horizontale; Maçons; Ouvrier d'éxecution; Ouvrier profesionnel | 112h | 2,730 |
| 17 | 2.7 | Pose de l'escalier | 1d | 2024-07-15 | 2024-07-15 | 23 | 4d |  | Chef d'équipe horizontale; Ouvrier profesionnel | 14h | 370.3 |
| 18 | 3 | **Niveau 1** | 13d | 2024-07-02 | 2024-07-18 |  | 0d |  |  | 336h | 8,190 |
| 19 | 3.1 | Coffrage de la dalle | 3d | 2024-07-02 | 2024-07-05 | 16FS+1d, 9 | 0d |  | Chef d'équipe horizontale; Maçons; Ouvrier d'éxecution; Ouvrier profesionnel | 84h | 2,047.5 |
| 20 | 3.2 | Mise en place des poutrelles hourdis | 2d | 2024-07-05 | 2024-07-09 | 19 | 0d |  | Chef d'équipe horizontale; Maçons; Ouvrier d'éxecution; Ouvrier profesionnel | 56h | 1,365 |
| 21 | 3.3 | Feirallage | 1d | 2024-07-09 | 2024-07-10 | 20 | 0d |  | Chef d'équipe horizontale; Maçons; Ouvrier d'éxecution; Ouvrier profesionnel | 28h | 682.5 |
| 22 | 3.4 | Coulage du béton de la dalle | 1d | 2024-07-10 | 2024-07-11 | 21 | 0d |  | Chef d'équipe horizontale; Maçons; Ouvrier d'éxecution; Ouvrier profesionnel | 28h | 682.5 |
| 23 | 3.5 | Décoffrage | 1d | 2024-07-12 | 2024-07-12 | 22FS+1d | 0d |  | Chef d'équipe horizontale; Maçons; Ouvrier d'éxecution; Ouvrier profesionnel | 28h | 682.5 |
| 24 | 3.6 | Maçonnerie des murs | 4d | 2024-07-15 | 2024-07-18 | 23 | 0d |  | Chef d'équipe verticaux; Maçons; Ouvrier d'éxecution; Ouvrier profesionnel | 112h | 2,730 |

| ID | WBS | Task | Duration | Start | Finish | Predecessors | Total slack | Resources | Work | Cost |
| --- | --- | --- | --- | --- | --- | --- | --- | --- | --- | --- |
| 25 | 4 | **Toit** | 10d | 2024-07-19 | 2024-08-16 |  | 0d |  | 252h | 6,142.5 |
| 26 | 4.1 | Coffrage de la dalle | 3d | 2024-07-19 | 2024-08-07 | 24FS+1d, 17 | 0d | Chef d'équipe horizontale; Maçons; Ouvrier d'éxecution; Ouvrier profesionnel | 84h | 2,047.5 |
| 27 | 4.2 | Mise en place des poutrelles hourdis | 2d | 2024-08-07 | 2024-08-09 | 26 | 0d | Chef d'équipe horizontale; Maçons; Ouvrier d'éxecution; Ouvrier profesionnel | 56h | 1,365 |
| 28 | 4.3 | Feirallage | 1d | 2024-08-09 | 2024-08-12 | 27 | 0d | Chef d'équipe horizontale; Maçons; Ouvrier d'éxecution; Ouvrier profesionnel | 28h | 682.5 |
| 29 | 4.4 | Coulage du béton de la dalle | 1d | 2024-08-12 | 2024-08-13 | 28 | 0d | Chef d'équipe horizontale; Maçons; Ouvrier d'éxecution; Ouvrier profesionnel | 28h | 682.5 |
| 30 | 4.5 | Décoffrage | 1d | 2024-08-14 | 2024-08-16 | 29FS+1d | 0d | Chef d'équipe horizontale; Maçons; Ouvrier d'éxecution; Ouvrier profesionnel | 28h | 682.5 |
| 31 | 4.6 | Maçonnerie de l'accrotère | 1d | 2024-08-16 | 2024-08-16 | 30 | 0d | Chef d'équipe verticaux; Maçons; Ouvrier d'éxecution; Ouvrier profesionnel | 28h | 682.5 |
| 32 | 5 | **Escalier exterieur** | 2d | 2024-08-19 | 2024-08-20 |  | 0d |  | 28h | 740.6 |
| 33 | 5.1 | Pose de l'escalier | 2d | 2024-08-19 | 2024-08-20 | 31 | 0d | Chef d'équipe horizontale; Ouvrier profesionnel | 28h | 740.6 |
